# Sales Force PA4

Schedule from MS Project, 2011-04-29 to 2011-12-16, costs in R$.

## Calendars

- Padrão: Mon-Fri 09:00-12:00, 13:00-18:00; Sat-Sun off.

## Resources

| Resource | Rate |
| --- | --- |
| Gerente de Projeto | 200 |
| Analista de Requisitos | 150 |
| Analista de Compras | 100 |
| Analista Desenvolvedor | 100 |
| Analista de Ambiente | 100 |
| Analista de Implantação | 100 |
| Analista de Treinamento | 100 |

## Schedule

| ID | WBS | Task | Type | Duration | Start | Finish | Predecessors | Total slack | Free slack | Constraint | Resources | Work | Cost |
| --- | --- | --- | --- | --- | --- | --- | --- | --- | --- | --- | --- | --- | --- |
| 1 | 1 | **SALES FORCE** |  | 166d? | 2011-04-29 | 2011-12-16 |  | 0d |  |  |  | 1558.4h | 197,440 |
| 3 | 1.1 | **Gerenciamento do Projeto** |  | 166d? | 2011-04-29 | 2011-12-16 |  | 0d |  |  |  | 356h | 71,200 |
| 4 | 1.1.1 | **Iniciação** |  | 4d? | 2011-04-29 | 2011-05-04 |  | 162d |  |  |  | 24h | 4,800 |
| 5 | 1.1.1.1 | Aprovação do Termo de Abertura | milestone | 0d | 2011-04-29 | 2011-04-29 |  | 163d | 1d | start no earlier than 2011-04-29 |  |  |  |
| 6 | 1.1.1.2 | Revisar o Termo de Abertura |  | 1d? | 2011-05-02 | 2011-05-02 | 5 | 162d | 0d | start no earlier than 2011-05-02 | Gerente de Projeto | 8h | 1,600 |
| 7 | 1.1.1.3 | Identificar os Envolvidos |  | 2d | 2011-05-03 | 2011-05-04 | 6 | 162d |  | start no earlier than 2011-05-03 | Gerente de Projeto | 16h | 3,200 |
| 8 | 1.1.2 | **Planejamento** |  | 7d? | 2011-05-05 | 2011-05-13 |  | 155d |  |  |  | 48h | 9,600 |
| 9 | 1.1.2.1 | Desenvolver o Plano de Gerenciamento do Projeto |  | 2d? | 2011-05-05 | 2011-05-06 | 6 | 160d |  | finish no earlier than 2011-05-06 | Gerente de Projeto | 16h | 3,200 |
| 10 | 1.1.2.2 | Desenvolver o Plano de Gerenciamento do Projeto |  | 5d? | 2011-05-09 | 2011-05-13 |  | 155d |  | start no earlier than 2011-05-09 | Gerente de Projeto [80%] | 32h | 6,400 |
| 11 | 1.1.3 | **Execução, Monitoramento e Controle** |  | 158d? | 2011-05-09 | 2011-12-14 |  | 2d |  |  |  | 268h | 53,600 |
| 12 | 1.1.3.1 | Gerenciar a Definição dos Requisitos da Solução |  | 30d? | 2011-05-09 | 2011-06-17 |  | 52d | 0d | finish no earlier than 2011-06-17 | Gerente de Projeto [20%] | 48h | 9,600 |
| 13 | 1.1.3.2 | Gerenciar a Análise e Contratação de Fornecedores |  | 10d? | 2011-06-20 | 2011-07-01 | 12 | 52d | 0d | finish no earlier than 2011-06-24 | Gerente de Projeto [10%] | 8h | 1,600 |
| 14 | 1.1.3.3 | Gerenciar a Implantação |  | 68d | 2011-07-04 | 2011-10-05 | 13 | 52d |  | start no earlier than 2011-07-04 | Gerente de Projeto [20%] | 108.8h | 21,760 |
| 15 | 1.1.3.4 | Gerenciar a Definição do Projeto Piloto |  | 5d? | 2011-09-19 | 2011-09-23 |  | 60d |  | start no earlier than 2011-09-19 | Gerente de Projeto [30%] | 12h | 2,400 |
| 16 | 1.1.3.5 | Gerenciar a Iniciação do Projeto Piloto |  | 2d? | 2011-10-10 | 2011-10-11 |  | 48d |  | finish no earlier than 2011-10-11 | Gerente de Projeto [50%] | 8h | 1,600 |
| 17 | 1.1.3.6 | Gerenciar a Execução do Projeto Piloto |  | 33d? | 2011-10-12 | 2011-11-25 |  | 9.5d | 0d | start no earlier than 2011-10-12 | Gerente de Projeto [10%] | 26.4h | 5,280 |
| 18 | 1.1.3.7 | Avaliar Resultados do Projeto Piloto |  | 3d | 2011-11-28 | 2011-11-30 | 17 | 9.5d | 0d |  | Gerente de Projeto [50%] | 12h | 2,400 |
| 19 | 1.1.3.8 | Preparar e Apresentar Relatório Final do Projeto Piloto |  | 2.5d | 2011-12-01 | 2011-12-05 | 18 | 9.5d |  | finish no earlier than 2011-12-02 | Gerente de Projeto [80%] | 16h | 3,200 |
| 20 | 1.1.3.9 | Gerenciar o Treinamento |  | 18d? | 2011-11-21 | 2011-12-14 |  | 2d |  | finish no earlier than 2011-12-14 | Gerente de Projeto [20%] | 28.8h | 5,760 |
| 21 | 1.1.4 | **Encerramento** |  | 2d? | 2011-12-15 | 2011-12-16 |  | 0d |  |  |  | 16h | 3,200 |
| 22 | 1.1.4.1 | Encerar o Projeto |  | 2d? | 2011-12-15 | 2011-12-16 |  | 0d |  | finish no earlier than 2011-12-16 | Gerente de Projeto | 16h | 3,200 |
| 24 | 1.2 | **Definição dos Requisitos da Solução** |  | 30d? | 2011-05-09 | 2011-06-17 |  | 100d |  |  |  | 240h | 30,000 |
| 25 | 1.2.1 | **Coleta de Requisitos** |  | 5d? | 2011-05-09 | 2011-05-13 |  | 100d |  |  |  | 40h | 6,000 |
| 26 | 1.2.1.1 | Coletar Requisitos |  | 5d? | 2011-05-09 | 2011-05-13 |  | 100d | 0d | finish no earlier than 2011-05-13 | Analista de Requisitos | 40h | 6,000 |

| ID | WBS | Task | Type | Duration | Start | Finish | Predecessors | Total slack | Free slack | Constraint | Resources | Work | Cost |
| --- | --- | --- | --- | --- | --- | --- | --- | --- | --- | --- | --- | --- | --- |
| 27 | 1.2.2 | **Documento de Especificação Funcional** |  | 10d? | 2011-05-16 | 2011-05-27 |  | 100d |  |  |  | 80h | 12,000 |
| 28 | 1.2.2.1 | Elaborar a Especificação Funcional |  | 9d? | 2011-05-16 | 2011-05-26 | 26 | 100d | 0d | start no earlier than 2011-05-09 | Analista de Requisitos | 72h | 10,800 |
| 29 | 1.2.2.2 | Inspecionar a Especificação Funcional |  | 1d? | 2011-05-27 | 2011-05-27 | 28 | 100d | 0d | finish no earlier than 2011-05-20 | Analista de Requisitos | 8h | 1,200 |
| 30 | 1.2.3 | **Documento de Especificação Técnica** |  | 15d? | 2011-05-30 | 2011-06-17 |  | 100d |  |  |  | 120h | 12,000 |
| 31 | 1.2.3.1 | Elaborar a Especificação Técnica |  | 14d? | 2011-05-30 | 2011-06-16 | 29 | 100d | 0d | finish no earlier than 2011-06-09 | Analista Desenvolvedor | 112h | 11,200 |
| 32 | 1.2.3.2 | Inspecionar a Especificação Técnica |  | 1d? | 2011-06-17 | 2011-06-17 | 31 | 100d | 0d | finish no earlier than 2011-06-10 | Analista Desenvolvedor | 8h | 800 |
| 34 | 1.3 | **Análise e Contratação de Fornecedores** |  | 10d? | 2011-06-20 | 2011-07-01 |  | 100d |  |  |  | 56h | 5,600 |
| 35 | 1.3.1 | Solicitar Proposta aos Fornecedores |  | 2d? | 2011-06-20 | 2011-06-21 | 32 | 100d | 3d | start no earlier than 2011-06-13 | Analista de Compras | 16h | 1,600 |
| 36 | 1.3.2 | Recebimento das Propostas | milestone | 0d | 2011-06-27 | 2011-06-27 | 35 | 97d | 0d | start no earlier than 2011-06-27 |  |  |  |
| 37 | 1.3.3 | Analisar Propostas Técnicas |  | 2d | 2011-06-27 | 2011-06-28 | 36 | 97d | 0d | start no earlier than 2011-06-20 | Analista de Compras | 16h | 1,600 |
| 38 | 1.3.4 | Analisar Propostas Cormeciais |  | 1d | 2011-06-29 | 2011-06-29 | 37 | 97d | 0d |  | Analista de Compras | 8h | 800 |
| 39 | 1.3.5 | Escolher e Contratar Fornecedor |  | 2d | 2011-06-30 | 2011-07-01 | 38 | 120d |  |  | Analista de Compras | 16h | 1,600 |
| 41 | 1.4 | **Implantação** |  | 68d | 2011-07-04 | 2011-10-05 |  | 52d |  |  |  | 612h | 61,200 |
| 42 | 1.4.1 | **Desenvolvimento** |  | 20d | 2011-07-04 | 2011-07-29 |  | 95d |  |  |  | 160h | 16,000 |
| 43 | 1.4.1.1 | Desenvolver Rotina de Interface ERP x Salesforce |  | 20d | 2011-07-04 | 2011-07-29 | 38 | 95d | 0d | start no earlier than 2011-07-04 | Analista Desenvolvedor | 160h | 16,000 |
| 44 | 1.4.2 | **Homologação dos Servidores** |  | 5d | 2011-07-25 | 2011-07-29 |  | 100d |  |  |  | 40h | 4,000 |
| 45 | 1.4.2.1 | Executar os Testes de Homologação dos Servidores |  | 5d | 2011-07-25 | 2011-07-29 |  | 100d |  | start no earlier than 2011-07-25 | Analista de Ambiente | 40h | 4,000 |
| 46 | 1.4.3 | **Instalação da Solução** |  | 5d | 2011-08-01 | 2011-08-05 |  | 95d |  |  |  | 80h | 8,000 |
| 47 | 1.4.3.1 | Instalar e Configurar o Mobile Software |  | 5d | 2011-08-01 | 2011-08-05 | 38 | 95d |  | start no earlier than 2011-08-01 | Analista de Ambiente | 40h | 4,000 |
| 48 | 1.4.3.2 | Instalar e Configurar a Rotina de Interface |  | 5d | 2011-08-01 | 2011-08-05 | 43 | 95d |  |  | Analista de Ambiente | 40h | 4,000 |
| 49 | 1.4.4 | **Testes** |  | 35d | 2011-08-15 | 2011-09-30 |  | 55d |  |  |  | 308h | 30,800 |
| 50 | 1.4.4.1 | **Testes de Integração** |  | 15d | 2011-08-15 | 2011-09-02 |  | 75d |  |  |  | 132h | 13,200 |
| 51 | 1.4.4.1.1 | Executar os testes de Integração |  | 15d | 2011-08-15 | 2011-09-02 |  | 75d |  | start no earlier than 2011-08-15 | Analista de Implantação | 120h | 12,000 |
| 52 | 1.4.4.1.2 | Corrigir falhas |  | 15d | 2011-08-15 | 2011-09-02 |  | 75d |  | start no earlier than 2011-08-15 | Analista Desenvolvedor [10%] | 12h | 1,200 |

| ID | WBS | Task | Duration | Start | Finish | Predecessors | Total slack | Free slack | Constraint | Resources | Work | Cost |
| --- | --- | --- | --- | --- | --- | --- | --- | --- | --- | --- | --- | --- |
| 53 | 1.4.4.2 | **Testes de Homologação** | 20d | 2011-09-05 | 2011-09-30 |  | 55d |  |  |  | 176h | 17,600 |
| 54 | 1.4.4.2.1 | Executar os testes de Homologação | 20d | 2011-09-05 | 2011-09-30 |  | 55d |  | start no earlier than 2011-09-05 | Analista de Implantação | 160h | 16,000 |
| 55 | 1.4.4.2.2 | Corrigir falhas | 20d | 2011-09-05 | 2011-09-30 |  | 55d |  | start no earlier than 2011-09-05 | Analista Desenvolvedor [10%] | 16h | 1,600 |
| 56 | 1.4.5 | **Avaliação dos Resultados da Implantação** | 3d | 2011-10-03 | 2011-10-05 |  | 52d |  |  |  | 24h | 2,400 |
| 57 | 1.4.5.1 | Avaliar Resultados da Implantação | 3d | 2011-10-03 | 2011-10-05 |  | 52d |  | start no earlier than 2011-10-03 | Analista de Implantação | 24h | 2,400 |
| 59 | 1.5 | **Projeto Piloto** | 55d? | 2011-09-19 | 2011-12-02 |  | 10d |  |  |  | 122.4h | 12,240 |
| 60 | 1.5.1 | **Definição do Projeto Piloto** | 5d? | 2011-09-19 | 2011-09-23 |  | 60d |  |  |  | 40h | 4,000 |
| 61 | 1.5.1.1 | Definir Projeto Piloto | 5d? | 2011-09-19 | 2011-09-23 |  | 60d |  | finish no earlier than 2011-09-23 | Analista de Implantação | 40h | 4,000 |
| 62 | 1.5.2 | **Execução do Projeto Piloto** | 35d? | 2011-10-10 | 2011-11-25 |  | 15d |  |  |  | 42.4h | 4,240 |
| 63 | 1.5.2.1 | Iniciar o Projeto Piloto | 2d | 2011-10-10 | 2011-10-11 |  | 15d | 0d | start no earlier than 2011-10-10 | Analista de Implantação | 16h | 1,600 |
| 64 | 1.5.2.2 | Suportar o Projeto Piloto | 33d? | 2011-10-12 | 2011-11-25 | 63 | 15d |  |  | Analista de Implantação [10%] | 26.4h | 2,640 |
| 65 | 1.5.3 | **Avaliação dos Resultados do Projeto Piloto** | 5d | 2011-11-28 | 2011-12-02 |  | 10d |  |  |  | 40h | 4,000 |
| 66 | 1.5.3.1 | Avaliar Resultados do Projeto Piloto | 3d | 2011-11-28 | 2011-11-30 |  | 12d |  | start no earlier than 2011-11-28 | Analista de Implantação | 24h | 2,400 |
| 67 | 1.5.3.2 | Preparar e Apresentar Relatório Final do Projeto Piloto | 2d | 2011-12-01 | 2011-12-02 |  | 10d |  | start no earlier than 2011-12-01 | Analista de Implantação | 16h | 1,600 |
| 69 | 1.6 | **Treinamentos** | 18d? | 2011-11-21 | 2011-12-14 |  | 2d |  |  |  | 172h | 17,200 |
| 70 | 1.6.1 | **Desenvolvimento dos Treinamentos** | 10d | 2011-11-21 | 2011-12-02 |  | 6d |  |  |  | 84h | 8,400 |
| 71 | 1.6.1.1 | Elaborar Treinamento | 5d | 2011-11-21 | 2011-11-25 |  | 6d | 0d | start no earlier than 2011-11-21 | Analista de Treinamento; Analista de Implantação [20%] | 44h | 4,400 |
| 72 | 1.6.1.2 | Preparar Material e Infraestrutura | 5d | 2011-11-28 | 2011-12-02 | 71 | 6d | 0d | start no earlier than 2011-11-28 | Analista de Treinamento | 40h | 4,000 |
| 73 | 1.6.2 | **Treinamento Equipe de Suporte/TI** | 3d? | 2011-12-05 | 2011-12-07 |  | 6d |  |  |  | 48h | 4,800 |
| 74 | 1.6.2.1 | Executar Treinamento Teórico | 1d | 2011-12-05 | 2011-12-05 | 72 | 6d | 0d | start no earlier than 2011-12-05 | Analista de Treinamento; Analista de Implantação | 16h | 1,600 |
| 75 | 1.6.2.2 | Executar Treinamento Prático | 2d? | 2011-12-06 | 2011-12-07 | 74 | 6d | 4d | finish no earlier than 2011-12-07 | Analista de Treinamento; Analista de Implantação | 32h | 3,200 |
| 76 | 1.6.3 | **Treinamento Funcionários Setor de Vendas** | 2d? | 2011-12-08 | 2011-12-09 |  | 5d |  |  |  | 16h | 1,600 |
| 77 | 1.6.3.1 | Executar Treinamento Teórico | 1d? | 2011-12-08 | 2011-12-08 | 72 | 5d | 0d | start no earlier than 2011-12-08 | Analista de Treinamento | 8h | 800 |
| 78 | 1.6.3.2 | Executar Treinamento Prático | 1d | 2011-12-09 | 2011-12-09 | 77 | 5d |  | start no earlier than 2011-12-09 | Analista de Treinamento | 8h | 800 |

| ID | WBS | Task | Duration | Start | Finish | Predecessors | Total slack | Free slack | Constraint | Resources | Work | Cost |
| --- | --- | --- | --- | --- | --- | --- | --- | --- | --- | --- | --- | --- |
| 79 | 1.6.4 | **Treinamento Vendedores Externos** | 2d? | 2011-12-12 | 2011-12-13 |  | 2d |  |  |  | 16h | 1,600 |
| 80 | 1.6.4.1 | Executar Treinamento Teórico | 1d? | 2011-12-12 | 2011-12-12 | 72 | 2d | 0d | start no earlier than 2011-12-12 | Analista de Treinamento | 8h | 800 |
| 81 | 1.6.4.2 | Executar Treinamento Prático | 1d | 2011-12-13 | 2011-12-13 | 80 | 2d | 0d | start no earlier than 2011-12-13 | Analista de Treinamento | 8h | 800 |
| 82 | 1.6.5 | **Avaliação dos Resultados dos Treinamentos** | 1d | 2011-12-14 | 2011-12-14 |  | 2d |  |  |  | 8h | 800 |
| 83 | 1.6.5.1 | Avaliar os Resultados dos Treinamentos | 1d | 2011-12-14 | 2011-12-14 | 72, 75, 81 | 2d |  | start no earlier than 2011-12-14 | Analista de Treinamento | 8h | 800 |
